# Інструментальна система для розробки веб сайтів

Schedule from MS Project, 2019-10-30 to 2020-02-11, status date 2019-11-26, costs in ₴, A marks actual dates.
Microsoft

## Calendars

- Стандартный: Mon-Fri 09:00-13:00, 14:00-18:00; Sat-Sun off. Exceptions (off unless hours are given): 2019-12-02 (Різдво католицьке), 2020-01-02 (Новий рік), 2020-01-06 to 2020-01-07 (Різдво).

## Resources

| Resource | Rate |
| --- | --- |
| Керівник проекту | 300 |
| Девелопер | 200 |
| Фронт-розробник | 200 |
| Веб-дизайнер | 150 |
| Тестер | 150 |
| Оренда офісу | 40 |
| Оренда веб-адреси | 2 |
| Купівля ПЗ | 2 |
| Їжа | 5000 |
| Рекрутер | 100 |
| Купівля паперу | 1000 |
| Комп'ютер | 20 |

## Schedule

| ID | WBS | Task | Type | Duration | Start | Finish | Predecessors | Complete | Remaining | Baseline start | Baseline finish | Baseline duration | Baseline 1 start | Baseline 1 finish | Total slack | Constraint | Resources | Work | Actual work | Cost | Baseline cost | Actual cost |
| --- | --- | --- | --- | --- | --- | --- | --- | --- | --- | --- | --- | --- | --- | --- | --- | --- | --- | --- | --- | --- | --- | --- |
| 2 | 1 | Початок проекту | milestone | 0d | 2019-10-30 A | 2019-10-30 A |  | 100% |  | 2019-10-30 | 2019-10-30 | 0d | 2019-10-30 | 2019-10-30 |  | start no earlier than 2019-10-30 |  |  |  |  |  |  |
| 3 | 2 | **Підготовка до початку проекту** |  | 10d | 2019-10-30 A | 2019-11-13 A | 2 | 100% |  | 2019-10-30 | 2019-11-13 | 10d | 2019-10-30 | 2019-11-13 |  |  | Оренда офісу | 80h | 80h | 3,200 | 3,200 | 3,200 |
| 4 | 2.1 | Оренда офісу |  | 5d | 2019-10-30 A | 2019-11-06 A |  | 100% |  | 2019-10-30 | 2019-11-06 | 5d | 2019-10-30 | 2019-11-06 |  |  |  |  |  |  |  |  |
| 5 | 2.2 | Набір персоналу |  | 5d | 2019-11-06 A | 2019-11-13 A | 4 | 100% |  | 2019-11-06 | 2019-11-13 | 5d | 2019-11-06 | 2019-11-13 |  |  |  |  |  |  |  |  |
| 6 | 2.3 | Купівля комп'ютерів |  | 3d | 2019-11-06 A | 2019-11-11 A | 4 | 100% |  | 2019-11-06 | 2019-11-11 | 3d | 2019-11-06 | 2019-11-11 |  |  |  |  |  |  |  |  |
| 7 | 2.4 | Купівля ПЗ |  | 1d | 2019-11-11 A | 2019-11-12 A | 6 | 100% |  | 2019-11-11 | 2019-11-12 | 1d | 2019-11-11 | 2019-11-12 |  |  |  |  |  |  |  |  |
| 8 | 2.5 | Купівля веб-адреси |  | 1d | 2019-11-11 A | 2019-11-12 A | 6 | 100% |  | 2019-11-11 | 2019-11-12 | 1d | 2019-11-11 | 2019-11-12 |  |  |  |  |  |  |  |  |
| 9 | 3 | **Затвердження проекту** |  | 4d | 2019-11-13 A | 2019-11-19 A | 3 | 100% |  | 2019-11-13 | 2019-11-19 | 4d | 2019-11-13 | 2019-11-19 |  |  | Оренда веб-адреси | 72h | 72h | 6,464 | 6,464 | 6,464 |
| 10 | 3.1 | Обговорення з замовником |  | 2d | 2019-11-13 A | 2019-11-15 A |  | 100% |  | 2019-11-13 | 2019-11-15 | 2d | 2019-11-13 | 2019-11-15 |  |  |  |  |  |  |  |  |
| 11 | 3.2 | Складання договору |  | 1d | 2019-11-15 A | 2019-11-18 A | 10 | 100% |  | 2019-11-15 | 2019-11-18 | 1d | 2019-11-15 | 2019-11-18 |  |  |  |  |  |  |  |  |
| 12 | 3.3 | Розподіл роботи |  | 1d | 2019-11-18 A | 2019-11-19 A | 11 | 100% |  | 2019-11-18 | 2019-11-19 | 1d | 2019-11-18 | 2019-11-19 |  |  | Веб-дизайнер; Девелопер; Рекрутер; Тестер; Фронт-розробник | 40h | 40h | 6,400 | 6,400 | 6,400 |
| 13 | 4 | **Розробка проекту** |  | 24.83d | 2019-11-19 A | 2019-12-24 | 9 | 59% | 10.12d | 2019-11-19 | 2020-01-03 | 31d | 2019-11-19 | 2020-01-03 | 0d |  | Комп'ютер; Оренда веб-адреси; Оренда офісу | 1020h | 583.62h | 89,717.33 | 74,576 | 48,134.77 |
| 14 | 4.1 | Розробка БД |  | 3d | 2019-11-19 A | 2019-11-22 A | 9 | 100% |  | 2019-11-19 | 2019-11-22 | 3d | 2019-11-19 | 2019-11-22 |  |  | Девелопер | 24h | 24h | 4,800 | 4,800 | 4,800 |
| 15 | 4.2 | Розробка дизайну сторінок |  | 4d | 2019-11-19 A | 2019-11-25 A | 9 | 100% |  | 2019-11-19 | 2019-11-25 | 4d | 2019-11-19 | 2019-11-25 |  |  | Веб-дизайнер | 32h | 32h | 4,800 | 4,800 | 4,800 |
| 16 | 4.3 | Верстка сторінок |  | 5d | 2019-11-19 A | 2019-11-26 A |  | 100% |  | 2019-11-19 | 2019-11-26 | 5d | 2019-11-19 | 2019-11-26 |  |  | Фронт-розробник | 40h | 40h | 8,000 | 8,000 | 8,000 |
| 17 | 4.4 | Розробка шаблонів |  | 15d | 2019-11-19 A | 2019-12-11 A | 9 | 100% |  | 2019-11-19 | 2019-12-11 | 15d | 2019-11-19 | 2019-12-11 |  |  | Веб-дизайнер | 120h | 120h | 18,000 |  | 18,000 |
| 18 | 4.5 | Розробка функціональних інструментів |  | 9.83d | 2019-11-26 A | 2019-12-10 | 16 | 8% | 9.08d | 2019-11-26 | 2019-12-19 | 16d | 2019-11-26 | 2019-12-19 | 0d | start no earlier than 2019-10-30 | Девелопер [150%] | 128h | 9h | 25,800 | 25,600 | 1,800 |
| 19 | 4.6 | Оптимізація і розміщення матеріалів аплікації |  | 10d | 2019-12-10 | 2019-12-24 | 18 |  |  | 2019-12-19 | 2020-01-03 | 10d | 2019-12-19 | 2020-01-03 | 0d |  | Девелопер | 80h |  | 16,000 | 16,000 |  |
| 20 | 5 | **Тестування** |  | 30d | 2019-12-24 | 2020-02-07 | 13 |  |  | 2020-01-03 | 2020-02-18 | 30d | 2020-01-03 | 2020-02-18 | 0d |  | Тестер | 240h |  | 36,000 | 36,000 |  |
| 21 | 5.1 | Тестування |  | 30d | 2019-12-24 | 2020-02-07 |  |  |  | 2020-01-03 | 2020-02-18 | 30d | 2020-01-03 | 2020-02-18 | 0d |  |  |  |  |  |  |  |
| 22 | 6 | **Завершення проекту** |  | 2d | 2020-02-07 | 2020-02-11 | 20 |  |  | 2020-02-18 | 2020-02-20 | 2d | 2020-02-18 | 2020-02-20 | 0d |  |  |  |  |  |  |  |
| 23 | 6.1 | Розміщення аплікації в інтернеті |  | 1d | 2020-02-07 | 2020-02-10 |  |  |  | 2020-02-18 | 2020-02-19 | 1d | 2020-02-18 | 2020-02-19 | 0d |  |  |  |  |  |  |  |
| 24 | 6.2 | Здача продукту в експлуатацію |  | 1d | 2020-02-10 | 2020-02-11 | 23 |  |  | 2020-02-19 | 2020-02-20 | 1d | 2020-02-19 | 2020-02-20 | 0d |  |  |  |  |  |  |  |
